Schedule from MS Project, 2024-05-22 to 2028-02-08, costs in ৳, A marks actual dates.

## Calendars

- Standard: Mon-Thu 09:00-17:00; Fri-Sat off; Sun 09:00-17:00.

## Resources

| Resource | Group | Unit | Rate |
| --- | --- | --- | --- |
| Lead Trainer | Trainers |  | 2000 |
| Assistant Trainer | Trainers |  | 1600 |
| Fire Extinguishers | Equipment | Each | 83000 |
| Fire Safety Manuals | Equipment | Each | 33000 |
| Safety Gear | Materials | Set | 55000 |
| Project Manager | Management |  | 2100 |
| Administrative Assistant | Administrative |  | 1400 |
| Training Coordinator | Coordination |  | 1200 |
| Projector | Equipment | Unit | 120000 |
| Whiteboard | Equipment | Unit | 80000 |
| First Aid Kit | Supplies | Kit | 60000 |
| Transportation | Logistics |  |  |
| Marketing Materials | Marketing | Batch | 60000 |
| Evaluation Forms | Administrative | Batch | 70000 |
| Insurance | Administrative |  |  |
| Venue Setup Team | Setup |  | 600 |
| Cleanup Crew | Cleanup |  | 600 |
| Audio/Visual Technician | Technical |  | 900 |
| Security Personnel | Security |  | 800 |
| Certificate | Administrative |  |  |
| Accounting Team |  |  | 1800 |

## Schedule

| ID | WBS | Task | Duration | Start | Finish | Predecessors | Complete | Remaining | Total slack | Free slack | Constraint | Resources | Work | Actual work | Cost | Actual cost |
| --- | --- | --- | --- | --- | --- | --- | --- | --- | --- | --- | --- | --- | --- | --- | --- | --- |
| 1 | 1 | **Life Skill Training** | 970d | 2024-05-22 A | 2028-02-08 |  | 76% | 230.25d | 0d |  |  |  | 20304h | 15248h | 35,761,000 | 26,876,800 |
| 2 | 1.1 | **Project Phase 01** | 231d | 2024-05-22 A | 2025-04-09 A |  | 100% |  |  |  |  |  | 4376h | 4376h | 8,395,600 | 8,065,600 |
| 3 | 1.1.1 | **Document Process** | 231d | 2024-05-22 A | 2025-04-09 A |  | 100% |  |  |  |  |  | 4376h | 4376h | 8,395,600 | 8,065,600 |
| 4 | 1.1.1.1 | 1. Define Project Scope | 5w | 2024-05-22 A | 2024-06-25 A |  | 100% |  |  |  | start no earlier than 2024-05-22 | Administrative Assistant; Lead Trainer; Project Manager | 600h | 600h | 1,100,000 | 1,100,000 |
| 5 | 1.1.1.2 | 2. Conduct Stackholder Analysis | 5.8w | 2024-06-26 A | 2024-08-05 A | 4 | 100% |  |  |  | start no earlier than 2024-05-22 | Lead Trainer; Marketing Materials [1 Batch]; Project Manager | 464h | 464h | 1,011,200 | 1,011,200 |
| 6 | 1.1.1.3 | 3. Create Project Charter | 4.2w | 2024-08-06 A | 2024-09-03 A | 5, 4 | 100% |  |  |  | start no earlier than 2024-05-22 | Administrative Assistant; Project Manager | 336h | 336h | 588,000 | 588,000 |
| 7 | 1.1.1.4 | 4. Identify Document Requirments | 4w | 2024-09-04 A | 2024-10-01 A | 6 | 100% |  |  |  | start no earlier than 2024-05-22 | Administrative Assistant; Project Manager | 320h | 320h | 560,000 | 560,000 |
| 8 | 1.1.1.5 | 5. Obtain necessary permissons | 7w | 2024-10-02 A | 2024-11-19 A | 7 | 100% |  |  |  | start no earlier than 2024-05-22 | Administrative Assistant; Project Manager | 560h | 560h | 980,000 | 980,000 |
| 9 | 1.1.1.6 | 6. Confirmation of Local Fire Department Partnership | 8.2w | 2024-11-20 A | 2025-01-15 A | 8 | 100% |  |  |  | start no earlier than 2024-05-22 | Lead Trainer; Marketing Materials [1 Batch]; Project Manager | 656h | 656h | 1,404,800 | 1,404,800 |
| 10 | 1.1.1.7 | 7. Develop Safety Training Protocol | 7.8w | 2025-01-16 A | 2025-03-11 A | 9 | 100% |  |  |  | start no earlier than 2024-05-22 | Assistant Trainer; Lead Trainer; Training Coordinator; Insurance [0.1%] | 936h | 936h | 1,827,600 | 1,497,600 |
| 11 | 1.1.1.8 | 8. Review Documentation | 4.2w | 2025-03-12 A | 2025-04-09 A | 10, 8, 9 | 100% |  |  |  | start no earlier than 2024-05-22 | Administrative Assistant; Lead Trainer; Project Manager | 504h | 504h | 924,000 | 924,000 |
| 12 | 1.2 | **Project Phase 02** | 442d | 2025-04-10 A | 2026-12-20 |  | 75% | 110.5d | 297d |  |  |  | 9272h | 6676h | 15,782,600 | 11,040,200 |
| 13 | 1.2.1 | **Training Preparation** | 442d | 2025-04-10 A | 2026-12-20 |  | 75% | 110.5d | 297d |  |  |  | 9272h | 6676h | 15,782,600 | 11,040,200 |
| 14 | 1.2.1.1 | 9. Identify Learning Objectives | 6w | 2025-04-10 A | 2025-05-21 A | 11 | 100% |  |  |  | start no earlier than 2024-05-22 | Assistant Trainer; Lead Trainer; Project Manager | 720h | 720h | 1,368,000 | 1,368,000 |
| 15 | 1.2.1.2 | 10. Desing Training Materials Template | 4.2w | 2025-05-22 A | 2025-06-19 A | 14 | 100% |  |  |  | start no earlier than 2024-05-22 | Administrative Assistant; Assistant Trainer; Lead Trainer; Training Coordinator | 672h | 672h | 1,041,600 | 1,041,600 |
| 16 | 1.2.1.3 | 11. Develop Training Modules | 7w | 2025-06-22 A | 2025-08-07 A | 15 | 100% |  |  |  | start no earlier than 2024-05-22 | Assistant Trainer; Lead Trainer; Training Coordinator | 840h | 840h | 1,344,000 | 1,344,000 |
| 17 | 1.2.1.4 | 12. Design Lesson Plans | 5w | 2025-08-10 A | 2025-09-11 A | 16, 14 | 100% |  |  |  | start no earlier than 2024-05-22 | Assistant Trainer; Lead Trainer; Training Coordinator | 600h | 600h | 960,000 | 960,000 |
| 18 | 1.2.1.5 | 13. Create Interactive Activities | 6w | 2025-09-14 A | 2025-10-23 A | 17 | 100% |  |  |  | start no earlier than 2024-05-22 | Assistant Trainer; Lead Trainer; Training Coordinator | 720h | 720h | 1,152,000 | 1,152,000 |
| 19 | 1.2.1.6 | 14. Prepare Visual Aids | 6w | 2025-10-26 A | 2025-12-04 A | 18, 16 | 100% |  |  |  | start no earlier than 2024-05-22 | Assistant Trainer; Lead Trainer | 480h | 480h | 864,000 | 864,000 |
| 20 | 1.2.1.7 | 15. Gather Necessary Materials | 5.2w | 2025-12-07 A | 2026-01-11 A | 19 | 100% |  |  |  | start no earlier than 2024-05-22 | Administrative Assistant; Fire Extinguishers [1 Each]; First Aid Kit [1 Kit]; Marketing Materials [1 Batch]; Safety Gear [1 Set]; Training Coordinator | 416h | 416h | 798,800 | 798,800 |
| 21 | 1.2.1.8 | 16. Secure Fire Extinguisher | 4.2w | 2026-01-12 A | 2026-02-09 A | 20 | 100% |  |  |  | start no earlier than 2024-05-22 | Administrative Assistant; Training Coordinator; Safety Gear [1 Set]; Security Personnel | 504h | 504h | 626,200 | 626,200 |
| 22 | 1.2.1.9 | 17. Co-ordinate with Fire Safety Experts | 5.2w | 2026-02-10 A | 2026-03-17 A | 21 | 100% |  |  |  | start no earlier than 2024-05-22 | Assistant Trainer; Lead Trainer; Project Manager | 624h | 624h | 1,185,600 | 1,185,600 |
| 23 | 1.2.1.10 | 18. Schedule Training Sessions | 4.2w | 2026-03-18 A | 2026-04-15 A | 20, 22 | 100% |  |  |  | start no earlier than 2024-05-22 | Administrative Assistant; Transportation [0.1%] | 168h | 168h | 355,200 | 235,200 |
| 24 | 1.2.1.11 | 19. Arrange Transportation | 4.2w | 2026-04-16 A | 2026-05-14 A | 23, 20, 21 | 100% |  |  |  | start no earlier than 2024-05-22 | Administrative Assistant | 168h | 168h | 235,200 | 235,200 |
| 25 | 1.2.1.12 | 20. Assemble Training Kits | 5w | 2026-05-17 A | 2026-06-18 A | 24, 23 | 100% |  |  |  | start no earlier than 2024-05-22 | Administrative Assistant; Assistant Trainer; Lead Trainer | 600h | 600h | 1,000,000 | 1,000,000 |
| 26 | 1.2.1.13 | 21. Prepare Training Sign-Up Sheets | 5.2w | 2026-06-21 A | 2026-07-26 | 25 | 79% | 1.1w | 297d | 0d | start no earlier than 2024-05-22 | Administrative Assistant | 208h | 164h | 291,200 | 229,600 |
| 27 | 1.2.1.14 | 22. Develop Pre-Assessment Tests | 4w | 2026-07-27 | 2026-08-23 | 26 |  |  | 297d | 0d | start no earlier than 2024-05-22 | Administrative Assistant; Assistant Trainer; Lead Trainer | 480h |  | 800,000 |  |
| 28 | 1.2.1.15 | 23. Train Instructors | 6.2w | 2026-08-24 | 2026-10-05 | 27, 26 |  |  | 297d | 0d | start no earlier than 2024-05-22 | Assistant Trainer; Lead Trainer; Project Manager | 744h |  | 1,413,600 |  |
| 29 | 1.2.1.16 | 24. Notify School Administrator | 5w | 2026-10-06 | 2026-11-09 | 28, 25 |  |  | 297d | 0d | start no earlier than 2024-05-22 | Administrative Assistant; Project Manager | 400h |  | 700,000 |  |
| 30 | 1.2.1.17 | 25. Finalize Training Agenda | 5.8w | 2026-11-10 | 2026-12-20 | 29 |  |  | 297d |  | start no earlier than 2024-05-22 | Administrative Assistant; Assistant Trainer; Lead Trainer; Project Manager | 928h |  | 1,647,200 |  |

| ID | WBS | Task | Duration | Start | Finish | Predecessors | Complete | Remaining | Total slack | Free slack | Constraint | Resources | Work | Actual work | Cost | Actual cost |
| --- | --- | --- | --- | --- | --- | --- | --- | --- | --- | --- | --- | --- | --- | --- | --- | --- |
| 31 | 1.3 | **Project Phase 03** | 115d | 2026-12-21 A | 2027-05-30 |  | 75% | 28.75d | 182d |  |  |  | 2416h | 1816h | 4,717,600 | 3,638,600 |
| 32 | 1.3.1 | **Training Delivery** | 115d | 2026-12-21 A | 2027-05-30 |  | 75% | 28.75d | 182d |  |  |  | 2416h | 1816h | 4,717,600 | 3,638,600 |
| 33 | 1.3.1.1 | 26. Conduct Pre-Assessment Tests | 2w | 2026-12-21 A | 2027-01-03 A | 30 | 100% |  |  |  | start no earlier than 2024-05-22 | Administrative Assistant; Evaluation Forms [1 Batch]; Project Manager | 160h | 160h | 350,000 | 350,000 |
| 34 | 1.3.1.2 | 27. Set Up Training Ground | 2w | 2027-01-04 A | 2027-01-17 A | 33 | 100% |  |  |  | start no earlier than 2024-05-22 | Safety Gear [1 Set]; Venue Setup Team; Audio/Visual Technician | 160h | 160h | 175,000 | 175,000 |
| 35 | 1.3.1.3 | 28. Deliver Training Modules | 3.2w | 2027-01-18 A | 2027-02-08 A | 34, 30 | 100% |  |  |  | start no earlier than 2024-05-22 | Assistant Trainer; Fire Safety Manuals [1 Each]; Lead Trainer; Projector [1 Unit]; Training Coordinator; Whiteboard [1 Unit]; Audio/Visual Technician | 512h | 512h | 962,600 | 962,600 |
| 36 | 1.3.1.4 | 29. Demostrate Fire Extinguisher Usage | 2w | 2027-02-09 A | 2027-02-22 A | 35 | 100% |  |  |  | start no earlier than 2024-05-22 | Assistant Trainer; Fire Extinguishers [1 Each]; Lead Trainer; Safety Gear [1 Set] | 160h | 160h | 426,000 | 426,000 |
| 37 | 1.3.1.5 | 30. Facilitate Interactive Activities | 2w | 2027-02-23 A | 2027-03-08 A | 36, 34, 35 | 100% |  |  |  | start no earlier than 2024-05-22 | Assistant Trainer; Fire Extinguishers [1 Each]; Lead Trainer; Safety Gear [1 Set]; Training Coordinator | 240h | 240h | 522,000 | 522,000 |
| 38 | 1.3.1.6 | 31. Provide Hands-On Training | 2w | 2027-03-09 A | 2027-03-22 A | 37 | 100% |  |  |  | start no earlier than 2024-05-22 | Assistant Trainer; Fire Extinguishers [1 Each]; Lead Trainer; Safety Gear [1 Set] | 160h | 160h | 426,000 | 426,000 |
| 39 | 1.3.1.7 | 32. Administer Post Assessment Tests | 2.8w | 2027-03-23 A | 2027-04-11 A | 38, 37 | 100% |  |  |  | start no earlier than 2024-05-22 | Administrative Assistant; Evaluation Forms [1 Batch]; Project Manager | 224h | 224h | 462,000 | 462,000 |
| 40 | 1.3.1.8 | 33. Collect Training Evaluation Forms | 3w | 2027-04-12 A | 2027-05-02 | 39 | 42% | 1.75w | 182d | 0d | start no earlier than 2024-05-22 | Assistant Trainer; Lead Trainer; Project Manager; Certificate [0.1%]; Cleanup Crew | 480h | 200h | 756,000 | 315,000 |
| 41 | 1.3.1.9 | 34. Gather Feedback from Instructors | 2w | 2027-05-03 | 2027-05-16 | 40 |  |  | 182d | 0d | start no earlier than 2024-05-22 | Assistant Trainer; Lead Trainer; Project Manager | 240h |  | 456,000 |  |
| 42 | 1.3.1.10 | 35. Gather Feedback From Students | 2w | 2027-05-17 | 2027-05-30 | 40, 41 |  |  | 182d |  | start no earlier than 2024-05-22 | Administrative Assistant; Evaluation Forms [1 Batch] | 80h |  | 182,000 |  |
| 43 | 1.4 | **Project Phase 04** | 182d | 2027-05-31 A | 2028-02-08 |  | 50% | 91d | 0d |  |  |  | 4240h | 2380h | 6,865,200 | 4,132,400 |
| 44 | 1.4.1 | **Project Closure** | 182d | 2027-05-31 A | 2028-02-08 |  | 50% | 91d | 0d |  |  |  | 4240h | 2380h | 6,865,200 | 4,132,400 |
| 45 | 1.4.1.1 | 36. Evaluate Effectiveness of Training | 3w | 2027-05-31 A | 2027-06-20 A | 42, 41 | 100% |  |  |  | start no earlier than 2024-05-22 | Assistant Trainer; Evaluation Forms [1 Batch]; Lead Trainer; Project Manager; Training Coordinator | 480h | 480h | 898,000 | 898,000 |
| 46 | 1.4.1.2 | 37. Review Feedback | 3w | 2027-06-21 A | 2027-07-11 A | 45 | 100% |  |  |  | start no earlier than 2024-05-22 | Administrative Assistant; Project Manager; Training Coordinator | 360h | 360h | 564,000 | 564,000 |
| 47 | 1.4.1.3 | 38. Analyze Evaluation Data | 4.2w | 2027-07-12 A | 2027-08-09 A | 46 | 100% |  |  |  | start no earlier than 2024-05-22 | Administrative Assistant; Project Manager | 336h | 336h | 588,000 | 588,000 |
| 48 | 1.4.1.4 | 39. Conduct Post-Project Review Meeting | 4.7w | 2027-08-10 A | 2027-09-12 A | 47 | 100% |  |  |  | start no earlier than 2024-05-22 | Administrative Assistant; Assistant Trainer; Lead Trainer; Project Manager; Training Coordinator | 940h | 940h | 1,560,400 | 1,560,400 |
| 49 | 1.4.1.5 | 40. Share Results with Stackholders | 6w | 2027-09-12 A | 2027-10-24 | 48 | 55% | 2.7w | 0d |  | start no earlier than 2024-05-22 | Administrative Assistant; Marketing Materials [1 Batch]; Project Manager | 480h | 264h | 900,000 | 522,000 |
| 50 | 1.4.1.6 | 41. Archive Project Documentation | 5.2w | 2027-10-24 | 2027-11-29 | 49 |  |  | 0d |  | start no earlier than 2024-05-22 | Administrative Assistant | 208h |  | 291,200 |  |
| 51 | 1.4.1.7 | 42. Farewell Party for Contributors | 5w | 2027-11-29 | 2028-01-03 | 50 |  |  | 0d |  | start no earlier than 2024-05-22 | Administrative Assistant; Cleanup Crew; Project Manager; Venue Setup Team | 800h |  | 940,000 |  |
| 52 | 1.4.1.8 | 43. Close Project Accounts | 5.3w | 2028-01-03 | 2028-02-08 | 51 |  |  | 0d |  | start no earlier than 2024-05-22 | Administrative Assistant; Project Manager; Accounting Team | 636h |  | 1,123,600 |  |
